Schedule from MS Project, 2011-03-03 to 2011-04-20, costs in р., A marks actual dates.
Microsoft

## Calendars

- Стандартный: Mon-Fri 09:00-13:00, 14:00-18:00; Sat-Sun off. Exceptions (off unless hours are given): 2011-03-08 (8 Марта).

## Resources

| Resource | Rate |
| --- | --- |
| Журналист | 200 |
| Менеджер | 300 |
| Дизайнер-фотограф | 50 |
| Редактор | 70 |
| Верстальщик | 50 |
| Корректор | 50 |

## Schedule

| ID | WBS | Task | Type | Duration | Start | Finish | Predecessors | Complete | Constraint | Resources | Work | Actual work | Cost | Actual cost |
| --- | --- | --- | --- | --- | --- | --- | --- | --- | --- | --- | --- | --- | --- | --- |
| 1 | 1 | Начало | milestone | 0d | 2011-03-03 A | 2011-03-03 A |  | 100% |  |  |  |  |  |  |
| 2 | 2 | **Разработка каталога** |  | 4d | 2011-03-03 A | 2011-03-09 A |  | 100% |  |  | 104h | 104h | 22,400 | 22,400 |
| 3 | 2.1 | Разработка содержания |  | 4d | 2011-03-03 A | 2011-03-09 A | 1 | 100% |  | Журналист; Менеджер [50%] | 72h | 72h | 16,800 | 16,800 |
| 4 | 2.2 | Разработка эскизов иллюстраций и фото |  | 2d | 2011-03-07 A | 2011-03-09 A | 3FF | 100% |  | Дизайнер-фотограф; Менеджер [50%] | 32h | 32h | 5,600 | 5,600 |
| 5 | 3 | **Подготовка материалов** |  | 17d | 2011-03-10 A | 2011-04-01 A |  | 100% |  |  | 281.6h | 281.6h | 59,200 | 59,200 |
| 6 | 3.1 | Сбор материала и написание текста |  | 14d | 2011-03-10 A | 2011-03-29 A | 3 | 100% |  | Журналист; Менеджер | 224h | 224h | 56,000 | 56,000 |
| 7 | 3.2 | Создание иллюстраций и фото |  | 5.2d | 2011-03-23 A | 2011-03-30 A | 6FS-3% | 100% |  | Дизайнер-фотограф | 41.6h | 41.6h | 2,080 | 2,080 |
| 8 | 3.3 | Литературное редактирование |  | 2d | 2011-03-31 A | 2011-04-01 A | 7 | 100% |  | Редактор | 16h | 16h | 1,120 | 1,120 |
| 9 | 4 | **Подготовка к печати** |  | 13d | 2011-04-04 A | 2011-04-20 A |  | 100% |  |  | 160h | 160h | 10,450.05 | 10,450.05 |
| 10 | 4.1 | Верстка |  | 5d | 2011-04-04 A | 2011-04-11 A | 8 | 100% | finish no earlier than 2011-04-11 | Верстальщик | 64h | 64h | 3,650.05 | 3,650.05 |
| 11 | 4.2 | Разработка макета обложки |  | 5d | 2011-04-04 A | 2011-04-11 A | 10FF | 100% |  | Дизайнер-фотограф | 40h | 40h | 2,000 | 2,000 |
| 12 | 4.3 | Корректура |  | 4d | 2011-04-12 A | 2011-04-15 A | 10, 8 | 100% |  | Корректор | 32h | 32h | 1,600 | 1,600 |
| 13 | 4.4 | Цветоделение |  | 2d | 2011-04-18 A | 2011-04-19 A | 12 | 100% |  | Верстальщик | 16h | 16h | 800 | 800 |
| 14 | 4.5 | Сдача в типографию |  | 1d | 2011-04-20 A | 2011-04-20 A | 13 | 100% |  | Менеджер | 8h | 8h | 2,400 | 2,400 |
| 15 | 5 | Конец | milestone | 0d | 2011-04-20 A | 2011-04-20 A | 14 | 100% |  |  |  |  |  |  |
